snapshot_date,project_id,task_id,workstream,task_name,owner,plan_start,plan_finish,budget_value,budget_unit,planned_progress,actual_progress,actual_cost_value,actual_cost_unit,open_issue_count,high_risk_count,status,updated_at,note
2027-03-31,CY-DCM-2026-01,T01,需求管理,需求范围确认,林若岚,2026/10/20,2026年11月15日,180000,元,100.0 %,100,180000,元,0,0,Done,2027-03-31 16:00:00,教学模拟数据
2027/3/31,CY-DCM-2026-01,T02,架构设计,总体架构设计,叶知行,2026年10月25日,2026-12-10,220000,元,100%,100.0 %,222200,元,0,0,已完成,2027-03-31 17:07:00,教学模拟数据
2027年3月31日,CY-DCM-2026-01,T03,基础环境,基础环境与部署,周启航,2026-10-20,2026/11/30,260000,元,1.00,100%,254800,元,0,0,完成,2027-03-31 18:14:00,教学模拟数据
2027-03-31,CY-DCM-2026-01,T04,系统集成,ERP接口集成,高一川,2026/11/15,2027年2月15日,420000,元,100,1.00,441000,元,0,0,Done,2027-03-31 16:21:00,教学模拟数据
2027/3/31,CY-DCM-2026-01,T05,数据治理,主数据迁移与校验,高一川,2026年11月20日,2027-03-10,380000,元,100.0 %,86,375800,元,4,2,预警,2027-03-31 17:28:00,教学模拟数据
2027年3月31日,CY-DCM-2026-01,T06,业务应用,流程协同平台开发,赵睿,2026-11-15,2027/2/28,360000,元,100%,98.0 %,377500,元,1,0,执行中,2027-03-31 18:35:00,教学模拟数据
2027-03-31,CY-DCM-2026-01,T07,业务应用,移动端应用开发,赵睿,2026/12/1,2027年3月15日,220000,元,1.00,93%,225100,元,2,1,处理中,2027-03-31 16:42:00,教学模拟数据
2027/3/31,CY-DCM-2026-01,T08,数据分析,经营分析看板,许清和,2026年12月15日,2027-03-20,160000,元,100,0.85,146900,元,2,0,预警,2027-03-31 17:49:00,教学模拟数据
2027年3月31日,CY-DCM-2026-01,T09,安全合规,安全设计与整改,叶知行,2026-11-20,2027/2/10,180000,元,100.0 %,100,189000,元,0,0,完成,2027-03-31 18:56:00,教学模拟数据
2027-03-31,CY-DCM-2026-01,T10,测试验证,系统集成测试,苏槿,2027/2/1,2027年3月25日,260000,元,100%,62.0 %,196700,元,6,3,严重滞后,2027-03-31 16:03:00,教学模拟数据
2027/3/31,CY-DCM-2026-01,T11,测试验证,用户验收测试,李珊,2027年3月1日,2027-04-05,200000,元,0.80,38%,89700,元,4,2,延期,2027-03-31 17:10:00,教学模拟数据
2027年3月31日,CY-DCM-2026-01,T12,培训推广,用户培训,李珊,2027-03-15,2027/4/10,100000,元,45,15,16500,元,2,0,延误,2027-03-31 18:17:00,教学模拟数据
2027-03-31,CY-DCM-2026-01,T13,上线准备,生产上线准备,唐 明宇,2027/3/20,2027年4月12日,120000,元,40.0 %,12,15100,元,2,1,严重滞后,2027-03-31 16:24:00,教学模拟数据
2027/3/31,CY-DCM-2026-01,T14,文档管理,项目文档与移交,林若岚,2026年12月1日,2027-04-15,100000,元,82%,68.0 %,73400,元,1,0,预警,2027-03-31 17:31:00,教学模拟数据
2027年3月31日,CY-DCM-2026-01,T15,项目管理,项目统筹与治理,唐明宇,2026-10-20,2027/4/19,300,千元,0.90,80%,252,千元,2,0,存在风险,2027-03-31 18:38:00,教学模拟数据
