project_id,activity_id,task_id,wbs_path,activity_name,discipline,owner_resource_id,owner_name,plan_version,baseline_start,baseline_finish,forecast_start,forecast_finish,duration_days,is_milestone,milestone_id,quality_gate,status,actual_progress,approval_status,source_material,updated_at,note
CY-DCM-2026-01,A401,T05,A1 > A11 > A401,数据治理遗留问题修复,DG,P002,高一川,V1,2027-04-01,2027-04-06,2027-04-01,2027-04-06,3,否,,无,NotStarted,0%,待确认,A01 项目总控进度计划,2027-03-31 18:30:00,教学模拟数据
CY-DCM-2026-01,A402,T05,A1 > A11 > A402,主数据复核与确认,DG,P002,高一川,V1,2027-04-02,2027-04-07,2027-04-07,2027-04-09,3,否,,无,NotStarted,0%,待确认,A01 项目总控进度计划,2027-03-31 18:30:00,教学模拟数据
CY-DCM-2026-01,A403,T05,A1 > A11 > A403,数据治理交付物归档,DG,P008,林若岚,V1,2027-04-08,2027-04-09,2027-04-12,2027-04-13,2,否,,无,NotStarted,0%,待确认,A01 项目总控进度计划,2027-03-31 18:30:00,教学模拟数据
CY-DCM-2026-01,A404,T06,A1 > A12 > A404,流程协同平台缺陷修复,DEV,P003,赵睿,V1,2027-04-01,2027-04-08,2027-04-01,2027-04-08,5,否,,无,NotStarted,0%,待确认,A01 项目总控进度计划,2027-03-31 18:30:00,教学模拟数据
CY-DCM-2026-01,A405,T06,A1 > A12 > A405,流程协同平台回归测试,DEV,P010,王楠,V1,2027-04-06,2027-04-07,2027-04-08,2027-04-09,2,否,,无,NotStarted,0%,待确认,A01 项目总控进度计划,2027-03-31 18:30:00,教学模拟数据
CY-DCM-2026-01,A406,T07,A1 > A13 > A406,移动端遗留缺陷修复,DEV,P003,赵睿,V1,2027-04-02,2027-04-07,2027-04-07,2027-04-09,3,否,,无,NotStarted,0%,待确认,A01 项目总控进度计划,2027-03-31 18:30:00,教学模拟数据
CY-DCM-2026-01,A407,T07,A1 > A13 > A407,移动端回归测试,DEV,P010,王楠,V1,2027-04-08,2027-04-09,2027-04-12,2027-04-13,2,否,,无,NotStarted,0%,待确认,A01 项目总控进度计划,2027-03-31 18:30:00,教学模拟数据
CY-DCM-2026-01,A408,T08,A1 > A14 > A408,经营看板指标口径校准,DG,P007,许清和,V1,2027-04-01,2027-04-06,2027-04-06,2027-04-08,3,否,,无,NotStarted,0%,待确认,A01 项目总控进度计划,2027-03-31 18:30:00,教学模拟数据
CY-DCM-2026-01,A409,T10,A2 > A21 > A409,集成测试方案补充,QA,P004,苏槿,V1,2027-04-01,2027-04-02,2027-04-01,2027-04-02,2,否,,无,NotStarted,0%,待确认,A01 项目总控进度计划,2027-03-31 18:30:00,教学模拟数据
CY-DCM-2026-01,A410,T10,A2 > A21 > A410,集成测试用例补充与执行,QA,P004,苏槿,V1,2027-04-01,2027-04-07,2027-04-06,2027-04-09,4,否,,无,NotStarted,0%,待确认,A01 项目总控进度计划,2027-03-31 18:30:00,教学模拟数据
CY-DCM-2026-01,A411,T13,A4 > A41 > A411,切换方案确认,OPS,P013,李承泽,V1,2027-04-01,2027-04-09,2027-04-08,2027-04-15,6,是,MS-A411,无,NotStarted,0%,已批准,A01 项目总控进度计划,2027-03-31 18:30:00,教学模拟数据
CY-DCM-2026-01,A412,T13,A4 > A41 > A412,环境与系统切换,OPS,P013,李承泽,V1,2027-04-12,2027-04-13,2027-04-16,2027-04-19,2,否,,无,NotStarted,0%,待确认,A01 项目总控进度计划,2027-03-31 18:30:00,教学模拟数据
CY-DCM-2026-01,A413,T13,A4 > A41 > A413,上线验证与回退,OPS,P009,周启航,V1,2027-04-14,2027-04-15,2027-04-20,2027-04-21,2,否,,无,NotStarted,0%,待确认,A01 项目总控进度计划,2027-03-31 18:30:00,教学模拟数据
CY-DCM-2026-01,A414,T11,A2 > A22 > A414,UAT 用例准备,UAT,P005,李珊,V1,2027-04-12,2027-04-14,2027-04-14,2027-04-16,3,否,,无,NotStarted,0%,待确认,A01 项目总控进度计划,2027-03-31 18:30:00,教学模拟数据
CY-DCM-2026-01,A415,T11,A2 > A22 > A415,UAT 执行,UAT,P005,李珊,V1,2027-04-16,2027-04-19,2027-04-22,2027-04-23,2,否,,无,NotStarted,0%,待确认,A01 项目总控进度计划,2027-03-31 18:30:00,教学模拟数据
CY-DCM-2026-01,A416,T11,A2 > A22 > A416,UAT 缺陷修复与复测,UAT,P003,赵睿,V1,2027-04-20,2027-04-20,2027-04-26,2027-04-26,1,否,,无,NotStarted,0%,待确认,A01 项目总控进度计划,2027-03-31 18:30:00,教学模拟数据
CY-DCM-2026-01,A417,T11,A2 > A22 > A417,UAT 签署,UAT,P012,张维汉,V1,2027-04-21,2027-04-21,2027-04-27,2027-04-27,1,否,,G-UAT,NotStarted,0%,待确认,A01 项目总控进度计划,2027-03-31 18:30:00,教学模拟数据
CY-DCM-2026-01,A418,T12,A3 > A31 > A418,用户培训材料准备,TRN,P005,李珊,V1,2027-04-15,2027-04-19,2027-04-19,2027-04-21,3,否,,无,NotStarted,0%,待确认,A01 项目总控进度计划,2027-03-31 18:30:00,教学模拟数据
CY-DCM-2026-01,A419,T12,A3 > A31 > A419,用户培训执行,TRN,P005,李珊,V1,2027-04-30,2027-05-05,2027-05-05,2027-05-07,3,否,,无,NotStarted,0%,待确认,A01 项目总控进度计划,2027-03-31 18:30:00,教学模拟数据
CY-DCM-2026-01,A420,T14,A3 > A32 > A420,文档整理与移交,DOC,P008,林若岚,V1,2027-04-08,2027-04-14,2027-04-12,2027-04-16,5,否,,无,NotStarted,0%,待确认,A01 项目总控进度计划,2027-03-31 18:30:00,教学模拟数据
CY-DCM-2026-01,A421,T14,A3 > A32 > A421,项目文档评审,DOC,P012,张维汉,V1,2027-04-15,2027-04-19,2027-04-19,2027-04-21,3,否,,无,NotStarted,0%,待确认,A01 项目总控进度计划,2027-03-31 18:30:00,教学模拟数据
CY-DCM-2026-01,A422,T15,A4 > A43 > A422,验收准备与证据整理,PM,P012,张维汉,V1,2027-04-22,2027-04-22,2027-04-28,2027-04-28,1,否,,无,NotStarted,0%,待确认,A01 项目总控进度计划,2027-03-31 18:30:00,教学模拟数据
CY-DCM-2026-01,A423,T13,A4 > A42 > A423,生产切换,OPS,P013,李承泽,V1,2027-04-23,2027-04-23,2027-04-29,2027-04-29,1,是,MS-A423,无,NotStarted,0%,已批准,A01 项目总控进度计划,2027-03-31 18:30:00,教学模拟数据
CY-DCM-2026-01,A424,T15,A4 > A42 > A424,试运行观察,OPS,P009,周启航,V1,2027-04-30,2027-05-07,2027-05-05,2027-05-11,5,否,,无,NotStarted,0%,待确认,A01 项目总控进度计划,2027-03-31 18:30:00,教学模拟数据
CY-DCM-2026-01,A425,T15,A4 > A42 > A425,试运行问题闭环,OPS,P009,周启航,V1,2027-05-10,2027-05-12,2027-05-12,2027-05-14,3,否,,无,NotStarted,0%,待确认,A01 项目总控进度计划,2027-03-31 18:30:00,教学模拟数据
CY-DCM-2026-01,A426,T15,A4 > A43 > A426,最终验收测试与签署,PM,P012,张维汉,V1,2027-04-26,2027-04-26,2027-04-30,2027-04-30,1,否,,G-FAT,NotStarted,0%,待确认,A01 项目总控进度计划,2027-03-31 18:30:00,教学模拟数据
CY-DCM-2026-01,A427,T15,A4 > A43 > A427,最终验收,PM,P012,张维汉,V1,2027-04-27,2027-04-27,2027-05-04,2027-05-04,1,是,MS-A427,无,NotStarted,0%,已批准,A01 项目总控进度计划,2027-03-31 18:30:00,教学模拟数据
